# AudioSynth

Schedule from GanttProject, 2012-10-24 to 2012-12-03.
Womprats

## Calendars

- Project calendar: Mon-Sun working.

## Resources

| Resource |
| --- |
| Jackson |
| Bradon |
| Kevin |
| Andy |

## Schedule

| ID | Task | Type | Duration | Start | Finish | Predecessors | Complete | Resources |
| --- | --- | --- | --- | --- | --- | --- | --- | --- |
| 1 | Schematic Design Review |  | 4d | 2012-10-24 | 2012-10-27 |  | 100% | Andy |
| 2 | Layout and Fab audio amp circuit |  | 5d | 2012-10-29 | 2012-11-02 |  | 100% | Jackson; Bradon |
| 3 | Verify LCD Backlight Design |  | 1d | 2012-11-02 | 2012-11-02 |  | 100% | Kevin |
| 4 | Verify Audio Amp Design |  | 1d | 2012-11-03 | 2012-11-03 | 2 | 100% |  |
| 5 | Design LCD Daughterboard |  | 5d | 2012-11-03 | 2012-11-07 | 3 |  | Kevin [33%] |
| 6 | Write EEPROM Driver |  | 14d | 2012-11-03 | 2012-11-16 | 1, 2 |  | Andy [66%] |
| 7 | Write UI Driver |  | 14d | 2012-11-03 | 2012-11-16 | 1, 2, 3 |  | Kevin [67%] |
| 8 | Write Synth Core |  | 14d | 2012-10-28 | 2012-11-10 | 1 |  | Jackson [67%]; Bradon [67%] |
| 9 | Make Footprints |  | 2d | 2012-11-04 | 2012-11-05 | 1, 3, 4 | 100% | Jackson [33%]; Bradon [33%]; Andy [34%] |
| 10 | Layout Board |  | 2d | 2012-11-06 | 2012-11-07 | 1, 3, 4, 9 | 100% | Jackson [33%]; Bradon [33%]; Andy [34%] |
| 11 | Verify Layout |  | 6d | 2012-11-08 | 2012-11-13 | 10 |  | Andy [34%] |
| 12 | CAM Files Sent to Sunstone | milestone | 0d | 2012-11-14 | 2012-11-14 | 11 |  | Bradon [33%] |
| 13 | Receive Boards |  | 7d | 2012-11-15 | 2012-11-21 | 12 |  |  |
| 14 | Code Integration |  | 5d | 2012-11-17 | 2012-11-21 | 6, 7, 8 |  |  |
| 15 | Verify PSU Works |  | 1d | 2012-11-22 | 2012-11-22 | 13 |  | Jackson |
| 16 | Verify CPU Works |  | 1d | 2012-11-22 | 2012-11-22 | 13 |  |  |
| 17 | Verify Audio Amp Works |  | 5d | 2012-11-23 | 2012-11-27 | 6, 8, 15, 16 |  |  |
| 18 | Verify LCD Works |  | 5d | 2012-11-23 | 2012-11-27 | 7, 15, 16 |  | Kevin |
| 19 | Verify EEPROM Works |  | 5d | 2012-11-23 | 2012-11-27 | 2, 6, 15, 16 |  | Andy |
| 20 | Verify Channels Work |  | 5d | 2012-11-23 | 2012-11-27 | 7, 8, 15, 16 |  | Bradon |
| 21 | Bring Up Board | milestone | 0d | 2012-11-28 | 2012-11-28 | 13, 15, 17, 18, 19, 20 |  |  |
| 22 | Software Written | milestone | 0d | 2012-11-29 | 2012-11-29 | 3, 4, 6, 7, 8, 21 |  | Jackson; Bradon; Andy |
| 23 | Build Enclosure |  | 3d | 2012-11-30 | 2012-12-02 | 1, 22 |  | Jackson; Bradon |
| 24 | Project Done | milestone | 0d | 2012-12-03 | 2012-12-03 | 21, 22, 23 |  | Jackson; Bradon; Kevin; Andy |

Notes:
- 1: The main circuit board must pass design review.
- 2: Since the audio amplifier section of the main circuit is untested, it is prudent to build a test circuit to verify the design works, before commiting to a final circuit board schematic.
- 3: The LCD Backlight requires a custom transistor driver circuit. This circuit must be simulated and prototyped before the final schematic can be finished.
- 4: Feedback from the audio amp prototype should be used to finalize the audio amp schematic.
- 5: The LCD screen will need a separate daughter board to be mounted in the final chassis.
- 6: The I2C EEPROM used in the audio synthesizer needs a software driver.
- 7: Writing the UI Driver entails writing a driver for the SPI LCD screen, as well as button-debouncing logic for the user input.
- 8: The synthesizer core is responsible for reading data from the channels, using software oscillators to mix the inputs, and outputing samples to the SPI DAC.
- 9: Footprints for all of the components in the circuits must be created, and must be verified against actual components.
- 10: The main PCB must be laid out in KiCad.
- 11: The PCB layout must pass design review.
- 12: CAM files need to be sent to Sunstone no later than this date.
- 13: We expect it will take at least a week for boards to arrive.
- 14: Once the circuit board arrives, the individual software submodules must be integrated.
- 15: Verify that the power supply circuit on the main PCB supplies 3.3V to all peripherals, and that the main fuse is not overloaded.
- 16: Verify that the microcontroller is programmable and can blink diagnostic LEDs
- 17: The Audio amp circuit must be capable of driving both an internal speaker and the line out.
- 18: The LCD must be capable of displaying characters and toggling the backlight.
- 19: Verify the bytes can be read and written to the I2C memory.
- 20: Verify that the microcontroller can read data from the input channels.
- 21: The individual section of the Circuit Board should all work by this point.
- 22: The software must be verified as working no later than this date.
- 23: Once the software and electronic hardware has been verified as working, the synthesizer enclosure must be made.
- 24: The project must be done no later than this date.
